# 福莱特自研MES项目

Schedule from a web Gantt chart, 2025-11-18 to 2027-05-10.
Saturdays and Sundays are off

## Schedule

| ID | WBS | Task | Type | Duration | Start | Finish | Complete | Status |
| --- | --- | --- | --- | --- | --- | --- | --- | --- |
| 2 | 1 | 项目启动会 |  | 1d | 2025-11-18 | 2025-11-18 | 100% | done |
| 3 | 2 | **调研** |  | 14d | 2025-11-18 | 2025-12-05 | 100% | done |
| 4 | 2.1 | 计划业务调研 |  | 1d | 2025-11-18 | 2025-11-18 | 100% | done |
| 5 | 2.2 | 原料工段调研 |  | 1d | 2025-11-19 | 2025-11-19 | 100% | done |
| 6 | 2.3 | 熔化工段调研 |  | 1d | 2025-11-19 | 2025-11-19 | 100% | done |
| 7 | 2.4 | 压延工段调研 |  | 1d | 2025-11-19 | 2025-11-19 | 100% | done |
| 8 | 2.5 | 收片工段调研 |  | 1d | 2025-11-20 | 2025-11-20 | 100% | done |
| 9 | 2.6 | 原片品管调研 |  | 1d | 2025-11-20 | 2025-11-20 | 100% | done |
| 10 | 2.7 | 仓库业务调研 |  | 1d | 2025-11-21 | 2025-11-21 | 100% | done |
| 11 | 2.8 | 加工流程业务调研 |  | 2d | 2025-11-25 | 2025-11-26 | 100% | done |
| 12 | 2.9 | 加工品质调研 |  | 1d | 2025-11-26 | 2025-11-26 | 100% | done |
| 13 | 2.10 | 机电业务调研 |  | 1d | 2025-11-27 | 2025-11-27 | 100% | done |
| 14 | 2.11 | 调研情况整理 |  | 9d | 2025-11-18 | 2025-11-28 | 100% | done |
| 15 | 2.12 | 调研报告输出 | fixed end | 14d | 2025-11-18 | 2025-12-05 | 100% | done |
| 16 | 2.13 | 补充调研 |  | 3d | 2025-12-03 | 2025-12-05 | 100% | done |
| 17 | 3 | **蓝图设计方案输出** |  | 93d | 2025-12-03 | 2026-04-10 | 100% | done |
| 18 | 3.1 | 基础数据1 |  | 3d | 2025-12-03 | 2025-12-05 | 100% | done |
| 19 | 3.2 | 基础数据2 |  | 4d | 2025-12-15 | 2025-12-18 | 100% | done |
| 20 | 3.3 | 销售订单管理 |  | 3d | 2025-12-03 | 2025-12-05 | 100% | done |
| 21 | 3.4 | 计划排产 |  | 2d | 2025-12-08 | 2025-12-09 | 100% | done |
| 22 | 3.5 | 生产执行 |  | 3d | 2025-12-10 | 2025-12-12 | 100% | done |
| 23 | 3.6 | 生产过程记录表 |  | 3d | 2025-12-19 | 2025-12-23 | 100% | done |
| 24 | 3.7 | 品质执行 |  | 3d | 2025-12-15 | 2025-12-17 | 100% | done |
| 25 | 3.8 | 品质过程记录表 |  | 8d | 2025-12-10 | 2025-12-19 | 100% | done |
| 26 | 3.9 | 钢化成品抽检记录 |  | 2d | 2025-12-22 | 2025-12-23 | 100% | done |
| 27 | 3.10 | 生产数据生成 |  | 2d | 2025-12-18 | 2025-12-19 | 100% | done |
| 28 | 3.11 | SAP推送 |  | 2d | 2025-12-19 | 2025-12-22 | 100% | done |
| 29 | 3.12 | 仓库 |  | 1d | 2025-12-23 | 2025-12-23 | 100% | done |
| 30 | 3.13 | 内部整合讨论修改 |  | 6d | 2025-12-24 | 2025-12-31 | 100% | done |

| ID | WBS | Task | Duration | Start | Finish | Complete | Status | inPeople |
| --- | --- | --- | --- | --- | --- | --- | --- | --- |
| 31 | 3.14 | **追加需求设计** | 10d | 2026-03-30 | 2026-04-10 | 100% | done |  |
| 32 | 3.14.1 | 水电气汇报 | 5d | 2026-03-30 | 2026-04-03 | 100% | done |  |
| 33 | 3.14.2 | 品质填报重新设计 | 10d | 2026-03-30 | 2026-04-10 | 100% | done |  |
| 34 | 4 | **设计方案确认** | 49d | 2026-01-13 | 2026-03-20 | 100% | done |  |
| 35 | 4.1 | **安福业务部门确认** | 3d | 2026-01-13 | 2026-01-15 | 100% | done |  |
| 36 | 4.1.1 | 计划确认 | 1d | 2026-01-13 | 2026-01-13 | 100% | done |  |
| 37 | 4.1.2 | 加工确认 | 1d | 2026-01-13 | 2026-01-13 | 100% | done |  |
| 38 | 4.1.3 | 原料确认 | 1d | 2026-01-14 | 2026-01-14 | 100% | done |  |
| 39 | 4.1.4 | 压延确认 | 1d | 2026-01-14 | 2026-01-14 | 100% | done |  |
| 40 | 4.1.5 | 仓库确认 | 1d | 2026-01-14 | 2026-01-14 | 100% | done |  |
| 41 | 4.1.6 | 收片确认 | 1d | 2026-01-14 | 2026-01-14 | 100% | done |  |
| 42 | 4.1.7 | 品质确认 | 1d | 2026-01-15 | 2026-01-15 | 100% | done |  |
| 43 | 4.2 | 方案优化调整 | 4d | 2026-01-19 | 2026-01-22 | 100% | done |  |
| 44 | 4.3 | 财务需求确认 | 1d | 2026-01-21 | 2026-01-21 | 100% | done |  |
| 45 | 4.4 | 合格证沟通 | 1d | 2026-01-21 | 2026-01-21 | 100% | done |  |
| 46 | 4.5 | 销售图纸文件确认 | 3d | 2026-02-27 | 2026-03-03 | 100% | done |  |
| 47 | 4.6 | 方案业务签字确认 | 3d | 2026-03-18 | 2026-03-20 | 100% | done |  |
| 48 | 5 | 开发方案内部沟通 | 4d | 2026-01-27 | 2026-01-30 | 100% | done |  |
| 49 | 6 | **系统开发** | 84d | 2026-03-03 | 2026-06-26 | 52% |  |  |
| 50 | 6.1 | **建表** | 57d | 2026-03-03 | 2026-05-20 | 75% |  |  |
| 51 | 6.1.1 | 系统建表 | 9d | 2026-03-03 | 2026-03-13 | 100% | done | 伍良近 |
| 52 | 6.1.2 | 品质填报建表 | 3d | 2026-05-18 | 2026-05-20 |  | waiting |  |
| 53 | 6.2 | **开发** | 74d | 2026-03-17 | 2026-06-26 | 52% |  |  |
| 54 | 6.2.1 | 技术架构 | 33d | 2026-03-17 | 2026-04-30 | 100% |  | 伍良近 |
| 55 | 6.2.2 | 基础数据 | 50d | 2026-03-24 | 2026-06-01 | 80% |  | 李艺琴 |
| 56 | 6.2.3 | 销售订单管理 | 50d | 2026-03-24 | 2026-06-01 | 40% |  | 张锐瑶 |
| 57 | 6.2.4 | 计划管理 | 15d | 2026-03-24 | 2026-04-13 | 100% |  | 李阳 |
| 58 | 6.2.5 | 生产管理 | 49d | 2026-03-24 | 2026-05-29 | 10% |  | 金李斌 |
| 59 | 6.2.6 | 生产填报 | 18d | 2026-05-06 | 2026-05-29 |  |  | 金李斌 |
| 60 | 6.2.7 | 品质管理 | 45d | 2026-03-30 | 2026-05-29 | 30% |  | 陶宇超 |
| 61 | 6.2.8 | 品质填报 | 10d | 2026-05-18 | 2026-05-29 |  | waiting |  |
| 62 | 6.2.9 | 生产结果 | 49d | 2026-03-24 | 2026-05-29 | 80% |  | 杨加丰 |
| 63 | 6.2.10 | 推送清单 | 35d | 2026-04-13 | 2026-05-29 | 80% |  | 杨加丰 |
| 64 | 6.2.11 | 库存管理 | 35d | 2026-04-13 | 2026-05-29 | 50% |  | 李阳 |
| 65 | 6.2.12 | 开发集成测试 | 20d | 2026-06-01 | 2026-06-26 |  | waiting |  |

| ID | WBS | Task | Type | Duration | Start | Finish | Predecessors | Status |
| --- | --- | --- | --- | --- | --- | --- | --- | --- |
| 66 | 7 | **UAT测试** |  | 25d | 2026-06-29 | 2026-07-31 |  | waiting |
| 67 | 7.1 | 系统管理员培训 |  | 5d | 2026-06-29 | 2026-07-03 |  | waiting |
| 68 | 7.2 | 单元模块、系统内测 |  | 25d | 2026-06-29 | 2026-07-31 |  | waiting |
| 69 | 7.3 | UAT问题跟进处理 |  | 25d | 2026-06-29 | 2026-07-31 |  | waiting |
| 70 | 8 | **培训** |  | 15d | 2026-08-10 | 2026-08-28 |  | waiting |
| 71 | 8.1 | 培训材料编写 |  | 10d | 2026-08-10 | 2026-08-21 |  | waiting |
| 72 | 8.2 | 系统动员会 |  | 1d | 2026-08-21 | 2026-08-21 |  | waiting |
| 73 | 8.3 | 系统培训 |  | 5d | 2026-08-24 | 2026-08-28 | 71 | waiting |
| 74 | 9 | **系统试运行** |  | 30d | 2026-08-10 | 2026-09-18 |  | waiting |
| 75 | 9.1 | 现场设备硬件确认 |  | 5d | 2026-08-10 | 2026-08-14 |  | waiting |
| 76 | 9.2 | 试运行环境搭建 |  | 5d | 2026-08-17 | 2026-08-21 |  | waiting |
| 77 | 9.3 | 试运行数据准备 |  | 10d | 2026-08-17 | 2026-08-28 |  | waiting |
| 78 | 9.4 | 系统试运行 |  | 15d | 2026-08-31 | 2026-09-18 | 73 | waiting |
| 79 | 9.5 | 功能优化 |  | 15d | 2026-08-31 | 2026-09-18 |  | waiting |
| 80 | 10 | **系统上线** |  | 40d | 2026-09-07 | 2026-10-30 |  | waiting |
| 81 | 10.1 | 正式环境部署 |  | 5d | 2026-09-07 | 2026-09-11 |  | waiting |
| 82 | 10.2 | 正式环境数据准备 |  | 5d | 2026-09-14 | 2026-09-18 | 81 | waiting |
| 83 | 10.3 | 正式上线 | fixed start | 15d | 2026-09-21 | 2026-10-09 | 78, 82 | waiting |
| 84 | 10.4 | 验收签字 |  | 15d | 2026-10-12 | 2026-10-30 | 83 | waiting |
| 85 | 11 | **南通** |  | 90d | 2026-09-14 | 2027-01-15 |  | waiting |
| 86 | 11.1 | 南通设备准备 |  | 40d | 2026-09-14 | 2026-11-06 |  | waiting |
| 87 | 11.2 | **系统试运行** |  | 30d | 2026-11-09 | 2026-12-18 |  | waiting |
| 88 | 11.2.1 | 现场设备硬件确认 |  | 5d | 2026-11-09 | 2026-11-13 |  | waiting |
| 89 | 11.2.2 | 试运行环境搭建 |  | 5d | 2026-11-09 | 2026-11-13 |  | waiting |
| 90 | 11.2.3 | 试运行数据准备 |  | 10d | 2026-11-09 | 2026-11-20 |  | waiting |
| 91 | 11.2.4 | 系统动员会 |  | 1d | 2026-11-20 | 2026-11-20 |  | waiting |
| 92 | 11.2.5 | 系统培训 |  | 5d | 2026-11-23 | 2026-11-27 | 90 | waiting |
| 93 | 11.2.6 | 系统试运行 |  | 15d | 2026-11-30 | 2026-12-18 | 92 | waiting |
| 94 | 11.2.7 | 系统针对性优化 |  | 15d | 2026-11-30 | 2026-12-18 |  | waiting |

| ID | WBS | Task | Duration | Start | Finish | Predecessors | Status |
| --- | --- | --- | --- | --- | --- | --- | --- |
| 95 | 11.3 | **正式上线** | 30d | 2026-12-07 | 2027-01-15 |  | waiting |
| 96 | 11.3.1 | 正式环境部署 | 5d | 2026-12-07 | 2026-12-11 |  | waiting |
| 97 | 11.3.2 | 正式环境数据准备 | 5d | 2026-12-14 | 2026-12-18 | 96 | waiting |
| 98 | 11.3.3 | 系统正式上线 | 20d | 2026-12-21 | 2027-01-15 | 93, 97 | waiting |
| 99 | 12 | **安福三期** | 75d | 2026-11-23 | 2027-03-05 |  | waiting |
| 100 | 12.1 | 三期设备准备 | 30d | 2026-11-23 | 2027-01-01 |  | waiting |
| 101 | 12.2 | **系统试运行** | 30d | 2027-01-04 | 2027-02-12 |  | waiting |
| 102 | 12.2.1 | 现场设备硬件确认 | 5d | 2027-01-04 | 2027-01-08 |  | waiting |
| 103 | 12.2.2 | 试运行环境搭建 | 5d | 2027-01-04 | 2027-01-08 |  | waiting |
| 104 | 12.2.3 | 试运行数据准备 | 5d | 2027-01-11 | 2027-01-15 | 103 | waiting |
| 105 | 12.2.4 | 系统动员会 | 1d | 2027-01-08 | 2027-01-08 |  | waiting |
| 106 | 12.2.5 | 系统培训 | 5d | 2027-01-11 | 2027-01-15 |  | waiting |
| 107 | 12.2.6 | 系统试运行 | 20d | 2027-01-18 | 2027-02-12 | 104, 106 | waiting |
| 108 | 12.2.7 | 系统针对性优化 | 20d | 2027-01-18 | 2027-02-12 |  | waiting |
| 109 | 12.3 | **系统正式上线** | 30d | 2027-01-25 | 2027-03-05 |  | waiting |
| 110 | 12.3.1 | 正式环境部署 | 5d | 2027-01-25 | 2027-01-29 |  | waiting |
| 111 | 12.3.2 | 正式环境数据准备 | 5d | 2027-02-01 | 2027-02-05 | 110 | waiting |
| 112 | 12.3.3 | 系统正式上线 | 15d | 2027-02-15 | 2027-03-05 | 107 | waiting |
| 113 | 13 | **越南** | 80d | 2027-01-11 | 2027-04-30 |  | waiting |
| 114 | 13.1 | 越南设备准备 | 30d | 2027-01-11 | 2027-02-19 |  | waiting |
| 115 | 13.2 | 越南版本准备 | 40d | 2027-01-11 | 2027-03-05 |  | waiting |
| 116 | 13.3 | **试运行** | 35d | 2027-02-22 | 2027-04-09 |  | waiting |
| 117 | 13.3.1 | 现场设备硬件确认 | 5d | 2027-02-22 | 2027-02-26 |  | waiting |
| 118 | 13.3.2 | 试运行环境搭建 | 5d | 2027-02-22 | 2027-02-26 |  | waiting |
| 119 | 13.3.3 | 试运行数据准备 | 5d | 2027-03-01 | 2027-03-05 | 118 | waiting |
| 120 | 13.3.4 | 系统动员会 | 1d | 2027-03-05 | 2027-03-05 |  | waiting |
| 121 | 13.3.5 | 系统培训 | 5d | 2027-03-08 | 2027-03-12 | 119, 120 | waiting |
| 122 | 13.3.6 | 系统试运行 | 20d | 2027-03-15 | 2027-04-09 | 121 | waiting |
| 123 | 13.3.7 | 系统针对性优化 | 20d | 2027-03-15 | 2027-04-09 |  | waiting |

| ID | WBS | Task | Duration | Start | Finish | Status |
| --- | --- | --- | --- | --- | --- | --- |
| 124 | 13.4 | **系统上线** | 25d | 2027-03-29 | 2027-04-30 | waiting |
| 125 | 13.4.1 | 正式环境部署 | 5d | 2027-03-29 | 2027-04-02 | waiting |
| 126 | 13.4.2 | 正式环境数据准备 | 10d | 2027-03-29 | 2027-04-09 | waiting |
| 127 | 13.4.3 | 系统上线 | 15d | 2027-04-12 | 2027-04-30 | waiting |
| 128 | 14 | 安福二期 | 1d | 2027-05-10 | 2027-05-10 | waiting |
